# ProjectPlan-ICTM-web-applications

Schedule from MS Project, 2017-05-01 to 2017-08-31, A marks actual dates.
Microsoft

## Calendars

- Bangladesh: Mon-Fri 08:00-12:00, 13:00-17:00; Sat-Sun off.

## Resources

| Resource |
| --- |
| Forhad |
| Suzon |
| Sakib |
| Masud |
| Rumi |
| Anis |
| Tarique |

## Schedule

| ID | WBS | Task | Type | Duration | Start | Finish | Predecessors | Complete | Remaining | Total slack | Constraint | Resources | Work | Actual work |
| --- | --- | --- | --- | --- | --- | --- | --- | --- | --- | --- | --- | --- | --- | --- |
| 1 | 1 | **Phase-1: Requirements Analysis & Design** |  | 59d | 2017-05-01 A | 2017-07-08 |  | 87% | 7.94d | 0d |  |  | 404h | 340h |
| 2 | 1.1 | **Requirements Gathering** |  | 16d | 2017-05-01 A | 2017-05-18 A |  | 100% |  |  |  |  | 92h | 92h |
| 3 | 1.1.1 | Analyse the Existing Site | manual | 3d | 2017-05-01 A | 2017-05-03 A |  | 100% |  |  |  | Anis | 24h | 24h |
| 4 | 1.1.2 | Create Proposal | manual | 4d | 2017-05-04 A | 2017-05-08 A |  | 100% |  |  | finish no earlier than 2017-05-09 | Anis | 12h | 12h |
| 5 | 1.1.3 | Presenting proposal | manual | 1d | 2017-05-09 A | 2017-05-09 A | 4 | 100% |  |  |  | Anis | 8h | 8h |
| 6 | 1.1.4 | Analyse the feedback from presentation | manual | 2d | 2017-05-11 A | 2017-05-12 A | 5 | 100% |  |  | finish no earlier than 2017-05-13 | Anis | 16h | 16h |
| 7 | 1.1.5 | Create Specification | manual | 1d | 2017-05-14 A | 2017-05-15 A | 6 | 100% |  |  | finish no earlier than 2017-05-15 | Anis | 8h | 8h |
| 8 | 1.1.6 | Incorporate the additional requirements from feedback | manual | 3d | 2017-05-16 A | 2017-05-18 A | 7 | 100% |  |  | start no earlier than 2017-06-03 | Anis | 24h | 24h |
| 9 | 1.2 | **Analysing the requirements** |  | 11d | 2017-05-20 A | 2017-05-31 A |  | 100% |  |  |  |  | 88h | 88h |
| 10 | 1.2.1 | Analysis the Specification | manual | 5d | 2017-05-20 A | 2017-05-24 A | 8 | 100% |  |  |  | Forhad | 32h | 32h |
| 11 | 1.2.2 | Create Sample Layout | manual | 2d | 2017-05-25 A | 2017-05-27 A | 10 | 100% |  |  | start no earlier than 2017-05-25 | Suzon | 24h | 24h |
| 12 | 1.2.3 | Present Sample layout and Get feedback from the client | manual | 1d | 2017-05-28 A | 2017-05-28 A | 11 | 100% |  |  |  | Anis | 8h | 8h |
| 13 | 1.2.4 | Analyse the Feedback | manual | 3d | 2017-05-29 A | 2017-05-31 A | 12 | 100% |  |  |  | Anis | 24h | 24h |
| 14 | 1.3 | **Team Bulding** |  | 9d | 2017-06-01 A | 2017-06-11 A |  | 100% |  |  |  |  | 72h | 72h |
| 15 | 1.3.1 | Setting Up Team & Environment etc. | manual | 9d | 2017-06-01 A | 2017-06-11 A |  | 100% |  |  |  | Tarique | 72h | 72h |
| 16 | 1.4 | **DESIGN** |  | 23d | 2017-06-12 A | 2017-07-08 |  | 61% | 8.94d | 0d |  |  | 152h | 88h |
| 17 | 1.4.1 | **Finalising the design layout** |  | 17d | 2017-06-12 A | 2017-07-01 |  | 92% | 1.42d | 0d |  |  | 96h | 88h |
| 18 | 1.4.1.1 | Create design and layout Incorporating the requirements | manual | 6d | 2017-06-12 A | 2017-06-18 A | 13 | 100% |  |  | finish no earlier than 2017-06-18 | Suzon | 48h | 48h |
| 19 | 1.4.1.2 | Creation of Web Graphics, Page Backgrounds or website skins. | manual | 4d | 2017-06-19 A | 2017-06-22 A | 18 | 100% |  |  | start no earlier than 2017-06-19 | Suzon | 32h | 32h |
| 20 | 1.4.1.3 | implementing Bootstrap framework | manual | 1d | 2017-06-24 A | 2017-06-24 A | 19 | 100% |  |  | start no earlier than 2017-06-24 | Suzon | 8h | 8h |
| 21 | 1.4.1.4 | Optimization of graphics to ensure a fast loading web page. | manual | 1d | 2017-07-01 | 2017-07-01 | 20 |  |  |  |  | Masud | 8h |  |
| 22 | 1.4.2 | **Testing and design Approval** |  | 6d | 2017-07-02 | 2017-07-08 |  |  |  | 0d |  |  | 56h |  |
| 23 | 1.4.2.1 | Test using the test cases e.g. compatibility, w3c standard | manual | 2d | 2017-07-02 | 2017-07-03 | 17 |  |  |  |  | Masud | 16h |  |
| 24 | 1.4.2.2 | Submit the final design | manual | 1d | 2017-07-04 | 2017-07-04 | 23 |  |  |  |  | Anis | 8h |  |
| 25 | 1.4.2.3 | Tweaks the changes and resubmit for approval | manual | 3d | 2017-07-05 | 2017-07-08 | 24 |  |  |  |  | Suzon | 32h |  |

| ID | WBS | Task | Type | Duration | Start | Finish | Complete | Remaining | Total slack | Resources | Work | Actual work |
| --- | --- | --- | --- | --- | --- | --- | --- | --- | --- | --- | --- | --- |
| 27 | 2 | **Phase-2: Website Front End Development (Part-1)** |  | 15d | 2017-07-03 A | 2017-07-19 | 6% | 14.08d |  |  | 288h | 19.2h |
| 28 | 2.1 | **Database Development** |  | 15d | 2017-07-03 A | 2017-07-19 | 10% | 13.56d |  |  | 184h | 19.2h |
| 29 | 2.1.1 | Analyse the requirements | manual | 10d | 2017-07-03 A | 2017-07-13 | 14% | 8.6d |  | Anis | 72h | 11.2h |
| 30 | 2.1.2 | Design the database schema | manual | 12d | 2017-07-03 A | 2017-07-16 | 8% | 11d |  | Sakib | 88h | 8h |
| 31 | 2.1.3 | Create the tables | manual | 1d | 2017-07-17 | 2017-07-17 |  |  |  | Forhad | 8h |  |
| 32 | 2.1.4 | Database Testing (using the test cases) | manual | 1d | 2017-07-18 | 2017-07-18 |  |  |  | Masud | 8h |  |
| 33 | 2.1.5 | Changes and fixing | manual | 1d | 2017-07-19 | 2017-07-19 |  |  |  | Forhad | 8h |  |
| 34 | 2.2 | **Wireframe Development (front end)** |  | 13d | 2017-07-03 | 2017-07-17 |  |  |  |  | 104h |  |
| 35 | 2.2.1 | Developing the wireframe for front end | manual | 11d | 2017-07-03 | 2017-07-15 |  |  |  | Suzon | 88h |  |
| 36 | 2.2.2 | Testing the front end wireframe | manual | 1d | 2017-07-16 | 2017-07-16 |  |  |  | Masud | 8h |  |
| 37 | 2.2.3 | Changing & Release front end wireframe for the approval | manual | 1d | 2017-07-17 | 2017-07-17 |  |  |  | Suzon | 8h |  |
| 39 | 3 | **Phase-3: CMS Development (Part-1)** |  | 27d | 2017-07-02 | 2017-08-01 |  |  |  |  | 240h |  |
| 40 | 3.1 | **Wireframe Development (admin panel)** |  | 6d | 2017-07-16 | 2017-07-22 |  |  | 0d |  | 40h |  |
| 41 | 3.1.1 | Developing the wireframe for admin panel (page,menu,course) | manual | 1d | 2017-07-16 | 2017-07-16 |  |  |  | Suzon | 8h |  |
| 42 | 3.1.2 | Developing the wireframe for admin panel (faculty,event,photo,user) | manual | 2d | 2017-07-18 | 2017-07-19 |  |  |  | Suzon | 16h |  |
| 43 | 3.1.3 | Testing the admin panel wireframe | manual | 1d | 2017-07-20 | 2017-07-20 |  |  |  | Masud | 8h |  |
| 44 | 3.1.4 | Changing & Release admin panel wireframe for the approval | manual | 1d | 2017-07-22 | 2017-07-22 |  |  |  | Suzon | 8h |  |
| 45 | 3.2 | **Admin Panel development** |  | 22d | 2017-07-08 | 2017-08-01 |  |  |  |  | 200h |  |
| 46 | 3.2.1 | Page Management - List/add/edit/delete | manual | 6d | 2017-07-08 | 2017-07-13 |  |  |  | Sakib | 40h |  |
| 47 | 3.2.2 | Menu Management -List/add/edit/delete | manual | 4d | 2017-07-08 | 2017-07-11 |  |  |  | Rumi | 24h |  |
| 48 | 3.2.3 | Course Management -List/add/edit/delete | manual | 5d | 2017-07-14 | 2017-07-18 |  |  |  | Sakib | 24h |  |
| 49 | 3.2.4 | Faculty management -List/add/edit/delete | manual | 3d | 2017-07-19 | 2017-07-22 |  |  |  | Rumi | 32h |  |
| 50 | 3.2.5 | Event/News Publishing-List/add/edit/delete | manual | 3d | 2017-07-23 | 2017-07-25 |  |  |  | Sakib | 24h |  |
| 51 | 3.2.6 | Photo Uploading -List/add/edit/delete | manual | 3d | 2017-07-26 | 2017-07-29 |  |  |  | Rumi | 32h |  |
| 52 | 3.2.7 | User Management-List/add/edit/delete | manual | 3d | 2017-07-30 | 2017-08-01 |  |  |  | Forhad | 24h |  |

| ID | WBS | Task | Type | Duration | Start | Finish | Total slack | Resources | Work |
| --- | --- | --- | --- | --- | --- | --- | --- | --- | --- |
| 54 | 4 | **Phase-2: Website Front End Development (Part-2)** |  | 32d | 2017-07-26 | 2017-08-31 |  |  | 464h |
| 55 | 4.1 | **Front end development** |  | 34d | 2017-07-03 | 2017-08-10 | 0d |  | 376h |
| 56 | 4.1.1 | Database driven customisable Homepage | manual | 3d | 2017-07-26 | 2017-07-29 |  | Sakib | 32h |
| 57 | 4.1.2 | Multi-level Dynamic Menu (Hamburger Menus) | manual | 2d | 2017-07-30 | 2017-07-31 |  | Rumi | 16h |
| 58 | 4.1.3 | Database driven Page title and content with keyword settings | manual | 3d | 2017-07-30 | 2017-08-01 |  | Sakib | 24h |
| 59 | 4.1.4 | **Database driven Course information (as per HEFCE guidance)** |  | 6d | 2017-07-26 | 2017-08-01 |  |  | 48h |
| 60 | 4.1.4.1 | Course Overview | manual | 1d | 2017-07-26 | 2017-07-26 |  | Forhad | 8h |
| 61 | 4.1.4.2 | Entry Requirements | manual | 1d | 2017-07-27 | 2017-07-27 |  | Forhad | 8h |
| 62 | 4.1.4.3 | Course Information | manual | 1d | 2017-07-29 | 2017-07-29 |  | Forhad | 8h |
| 63 | 4.1.4.4 | Course Cost | manual | 1d | 2017-07-30 | 2017-07-30 |  | Forhad | 8h |
| 64 | 4.1.4.5 | Module Information | manual | 1d | 2017-07-31 | 2017-07-31 |  | Forhad | 8h |
| 65 | 4.1.4.6 | Assessment/Feedback Information | manual | 1d | 2017-08-01 | 2017-08-01 |  | Forhad | 8h |
| 66 | 4.1.5 | Faculty Information | manual | 3d | 2017-08-02 | 2017-08-05 |  | Sakib | 32h |
| 67 | 4.1.6 | News and Notice Boards | manual | 2d | 2017-07-06 | 2017-07-08 |  | Sakib | 24h |
| 68 | 4.1.7 | Contact Info and Contact Form | manual | 2d | 2017-08-01 | 2017-08-02 |  | Rumi | 16h |
| 69 | 4.1.8 | Dynamic Header/Footer | manual | 2d | 2017-08-09 | 2017-08-10 |  | Sakib | 16h |
| 70 | 4.1.9 | Photo Gallery and Videos | manual | 2d | 2017-07-03 | 2017-07-04 |  | Rumi | 16h |
| 71 | 4.1.10 | Organisational Structure | manual | 2d | 2017-07-11 | 2017-07-12 |  | Suzon | 16h |
| 72 | 4.1.11 | Community Engagement | manual | 2d | 2017-07-12 | 2017-07-13 |  | Suzon | 16h |
| 73 | 4.1.12 | Alumni Page | manual | 2d | 2017-07-13 | 2017-07-15 |  | Suzon | 24h |
| 74 | 4.1.13 | Feedback Form | manual | 1d | 2017-07-03 | 2017-07-03 |  | Rumi | 8h |
| 75 | 4.1.14 | Integrating with VLE | manual | 3d | 2017-07-03 | 2017-07-05 |  | Forhad | 24h |
| 76 | 4.1.15 | Integration with Important Links | manual | 1d | 2017-07-03 | 2017-07-03 |  | Suzon | 8h |
| 77 | 4.1.16 | Captcha for spam prevention | manual | 2d | 2017-07-03 | 2017-07-04 |  | Sakib | 16h |
| 78 | 4.1.17 | Sitemap and Site RSS Feeds | manual | 2d | 2017-07-03 | 2017-07-04 |  | Forhad | 16h |
| 79 | 4.1.18 | Accessibility for disabled people | manual | 2d | 2017-07-03 | 2017-07-04 |  | Forhad | 16h |
| 80 | 4.1.19 | Responsive (Support for mobile devices) | milestone, manual | 0d | 2017-07-03 | 2017-07-03 |  | Suzon |  |
| 81 | 4.1.20 | SEO FriendlyCoding | manual | 1d | 2017-07-03 | 2017-07-03 |  | Sakib | 8h |

| ID | WBS | Task | Type | Duration | Start | Finish | Total slack | Resources | Work |
| --- | --- | --- | --- | --- | --- | --- | --- | --- | --- |
| 82 | 4.2 | **Testing & Quality Assurance** |  | 1d | 2017-07-26 | 2017-07-26 | 0d |  | 40h |
| 83 | 4.2.1 | Usability Testing | manual | 1d | 2017-07-26 | 2017-07-26 |  | Masud | 8h |
| 84 | 4.2.2 | Functional Testing | manual | 1d | 2017-07-26 | 2017-07-26 |  | Masud | 8h |
| 85 | 4.2.3 | Compatibility Testing: | manual | 1d | 2017-07-26 | 2017-07-26 |  | Masud | 8h |
| 86 | 4.2.4 | Security Testing | manual | 1d | 2017-07-26 | 2017-07-26 |  | Rumi | 8h |
| 87 | 4.2.5 | Performance Testing | manual | 1d | 2017-07-26 | 2017-07-26 |  | Rumi | 8h |
| 88 | 4.3 | **Bug Fixing and Release** |  | 6d | 2017-07-26 | 2017-08-01 | 0d |  | 48h |
| 89 | 4.3.1 | Bug fixing | manual | 6d | 2017-07-26 | 2017-08-01 |  | Sakib | 40h |
| 90 | 4.3.2 | Release for User Acceptance Testing | manual | 1d | 2017-07-26 | 2017-07-26 |  | Masud | 8h |
| 92 | 5 | **Phase-3: CMS Development (Part-2)** |  | 7d? | 2017-05-01 | 2017-05-08 | 0d |  | 432h |
| 93 | 5.1 | **User Role and Access Control** |  | 7d | 2017-05-01 | 2017-05-08 | 0d |  | 152h |
| 94 | 5.1.1 | Access Control | manual | 3d | 2017-05-01 | 2017-05-03 |  | Forhad | 24h |
| 95 | 5.1.2 | User Role -Admin/Editor/Guest | manual | 2d | 2017-05-01 | 2017-05-02 |  | Sakib | 16h |
| 96 | 5.1.3 | Page Creation with Rich Text Editor | manual | 7d | 2017-05-01 | 2017-05-08 |  | Rumi | 48h |
| 97 | 5.1.4 | User Login and forget password | manual | 2d | 2017-05-01 | 2017-05-02 |  | Sakib | 16h |
| 98 | 5.1.5 | User Profile | manual | 4d | 2017-05-01 | 2017-05-04 |  | Sakib | 32h |
| 99 | 5.1.6 | Edit profile and password | manual | 2d | 2017-05-01 | 2017-05-02 |  | Rumi | 16h |
| 100 | 5.2 | **Testing & Quality Assurance** |  | 2d | 2017-05-01 | 2017-05-02 | 0d |  | 48h |
| 101 | 5.2.1 | Usability Testing | manual | 1d | 2017-05-01 | 2017-05-01 |  | Rumi | 8h |
| 102 | 5.2.2 | Functional Testing | manual | 2d | 2017-05-01 | 2017-05-02 |  | Masud | 16h |
| 103 | 5.2.3 | Compatibility Testing: | manual | 1d | 2017-05-01 | 2017-05-01 |  | Masud | 8h |
| 104 | 5.2.4 | Security Testing | manual | 1d | 2017-05-01 | 2017-05-01 |  | Rumi | 8h |
| 105 | 5.2.5 | Performance Testing | manual | 1d | 2017-05-01 | 2017-05-01 |  | Masud | 8h |
| 106 | 5.3 | **Content Management** |  | 5d | 2017-05-01 | 2017-05-06 | 0d |  | 208h |
| 107 | 5.3.1 | Creating pages | manual | 5d | 2017-05-01 | 2017-05-06 |  | Suzon | 48h |
| 108 | 5.3.2 | Entering Course Information | manual | 4d | 2017-05-01 | 2017-05-04 |  | Suzon | 32h |
| 109 | 5.3.3 | Entering Faculty information | manual | 5d | 2017-05-01 | 2017-05-06 |  | Masud | 48h |
| 110 | 5.3.4 | Entering Event/News | manual | 4d | 2017-05-01 | 2017-05-04 |  | Masud | 32h |
| 111 | 5.3.5 | Uploading Photos | manual | 3d | 2017-05-01 | 2017-05-03 |  | Suzon | 24h |
| 112 | 5.3.6 | Creating users | manual | 3d | 2017-05-01 | 2017-05-03 |  | Suzon | 24h |

| ID | WBS | Task | Type | Duration | Start | Finish | Total slack | Resources | Work |
| --- | --- | --- | --- | --- | --- | --- | --- | --- | --- |
| 113 | 5.4 | **Bug Fixing & Release** |  | 2d? | 2017-05-01 | 2017-05-02 | 0d |  | 24h |
| 114 | 5.4.1 | Bug fixing | manual | 2d | 2017-05-01 | 2017-05-02 |  | Sakib | 16h |
| 115 | 5.4.2 | Release for User Acceptance Testing | manual | 1d | 2017-05-01 | 2017-05-01 |  | Masud | 8h |
| 117 | 6 | **Phase-4: Social Media Network** |  | 1d | 2017-05-01 | 2017-05-01 | 0d |  |  |
| 118 | 6.1 | **Facebook Integration** |  | 1d | 2017-05-01 | 2017-05-01 | 0d |  |  |
| 119 | 6.1.1 | Create a Facebook page | manual | 1d | 2017-05-01 | 2017-05-01 |  |  |  |
| 120 | 6.1.2 | Upload content for Facebook page | manual | 1d | 2017-05-01 | 2017-05-01 |  |  |  |
| 121 | 6.1.3 | Integrating Facebook page | manual | 1d | 2017-05-01 | 2017-05-01 |  |  |  |
| 122 | 6.2 | **Twitter Integration** |  | 1d | 2017-05-01 | 2017-05-01 | 0d |  |  |
| 123 | 6.2.1 | Create a Twitter Account | manual | 1d | 2017-05-01 | 2017-05-01 |  |  |  |
| 124 | 6.2.2 | Upload content for Twitter account | manual | 1d | 2017-05-01 | 2017-05-01 |  |  |  |
| 125 | 6.2.3 | Integrating Twitter account | manual | 1d | 2017-05-01 | 2017-05-01 |  |  |  |
| 126 | 6.3 | **Youtube Integration** |  | 1d | 2017-05-01 | 2017-05-01 | 0d |  |  |
| 127 | 6.3.1 | Create a Youtube channel | manual | 1d | 2017-05-01 | 2017-05-01 |  |  |  |
| 128 | 6.3.2 | Upload content for Youtube channel | manual | 1d | 2017-05-01 | 2017-05-01 |  |  |  |
| 129 | 6.3.3 | Integrating Youtube channel | manual | 1d | 2017-05-01 | 2017-05-01 |  |  |  |
| 130 | 6.4 | **Google+ Integration** |  | 1d | 2017-05-01 | 2017-05-01 | 0d |  |  |
| 131 | 6.4.1 | Create a google plus page | manual | 1d | 2017-05-01 | 2017-05-01 |  |  |  |
| 132 | 6.4.2 | Upload content for google plus page | manual | 1d | 2017-05-01 | 2017-05-01 |  |  |  |
| 133 | 6.4.3 | Integrating google plus page | manual | 1d | 2017-05-01 | 2017-05-01 |  |  |  |
| 134 | 6.5 | **LinkdIn Integration** |  | 1d | 2017-05-01 | 2017-05-01 | 0d |  |  |
| 135 | 6.5.1 | Create a LinkdIn Page | manual | 1d | 2017-05-01 | 2017-05-01 |  |  |  |
| 136 | 6.5.2 | Upload content for LinkdIn page | manual | 1d | 2017-05-01 | 2017-05-01 |  |  |  |
| 137 | 6.5.3 | Integrating LinkdIn page | manual | 1d | 2017-05-01 | 2017-05-01 |  |  |  |
